# trWorkbench 1.0

Schedule from MS Project, 2008-03-19 to 2008-06-13, A marks actual dates.
NCI

## Calendars

- Standard: Mon-Fri 08:00-12:00, 13:00-17:00; Sat-Sun off. Exceptions (off unless hours are given): 2008-05-26.

## Resources

| Resource |
| --- |
| SM |
| ET |
| TJ |
| MH |
| SJ |
| SM |
| WF |
| TBD1 |
| TBD2 |
| MR |

## Schedule

| ID | WBS | Task | Duration | Start | Finish | Predecessors | Complete | Remaining | Total slack | Free slack | Constraint | Resources | Work | Actual work |
| --- | --- | --- | --- | --- | --- | --- | --- | --- | --- | --- | --- | --- | --- | --- |
| 1 | 1 | **caIntegrator2 1.0** | 62d? | 2008-03-19 A | 2008-06-13 |  | 47% | 32.64d? | 0d |  |  |  | 3242.67h | 1448h |
| 2 | 1.1 | **Inception phase** | 23d? | 2008-03-19 A | 2008-04-18 |  | 5% | 21.76d? | 39d |  |  |  | 752h | 32h |
| 3 | 1.1.1 | **Inception Iteration 1** | 23d? | 2008-03-19 A | 2008-04-18 |  | 5% | 21.76d? | 39d |  |  |  | 752h | 32h |
| 4 | 1.1.1.1 | **Requirements** | 16d? | 2008-03-19 A | 2008-04-09 |  | 29% | 11.43d? | 46d |  |  |  | 112h | 32h |
| 5 | 1.1.1.1.1 | Develop Vision | 2d? | 2008-03-19 A | 2008-03-20 A |  | 100% |  |  |  |  | SM | 16h | 16h |
| 6 | 1.1.1.1.2 | Find Actors and Use Cases | 2d | 2008-03-19 A | 2008-03-20 A |  | 100% |  |  |  |  | ET | 16h | 16h |
| 7 | 1.1.1.1.3 | Detail a Use Case (multiple) | 5d | 2008-03-27 | 2008-04-02 | 6 |  |  | 46d | 0d | finish no earlier than 2008-04-02 | ET | 40h |  |
| 8 | 1.1.1.1.4 | Finalize Use Case Model | 5d | 2008-04-03 | 2008-04-09 | 7 |  |  | 46d |  | start no earlier than 2008-04-02 | ET | 40h |  |
| 9 | 1.1.1.2 | **Analysis and Design** | 18d | 2008-03-26 | 2008-04-18 |  |  |  | 39d |  |  |  | 432h |  |
| 10 | 1.1.1.2.1 | Architectural Analysis | 4d | 2008-03-26 | 2008-03-31 |  |  |  | 53d |  | start no earlier than 2008-03-26 | ET [50%]; MH [50%] | 24h |  |
| 11 | 1.1.1.2.2 | **Construct Architectural Proof of Concept** | 17d | 2008-03-27 | 2008-04-18 |  |  |  | 39d |  |  |  | 408h |  |
| 12 | 1.1.1.2.2.1 | Investigate clinical data representation approaches | 12d | 2008-03-27 | 2008-04-11 |  |  |  | 39d | 0d | start no earlier than 2008-03-27 | MH | 96h |  |
| 13 | 1.1.1.2.2.2 | Analyse genomic data storage and retrieval | 8d | 2008-04-02 | 2008-04-11 |  |  |  | 44d |  | finish no earlier than 2008-04-11 | ET; MH; TJ | 192h |  |
| 14 | 1.1.1.2.2.3 | Define integrated object model (clinical, genomic, imaging) | 5d | 2008-04-14 | 2008-04-18 | 12 |  |  | 39d |  |  | ET; MH; TJ | 120h |  |
| 15 | 1.1.1.3 | **UI Analysis** | 7d? | 2008-03-27 | 2008-04-04 |  |  |  | 49d |  |  |  | 56h |  |
| 16 | 1.1.1.3.1 | Analysis of existing caIntegrator UI and Analysis tools (KM Plots, GenePattern etc) | 7d? | 2008-03-27 | 2008-04-04 |  |  |  | 49d |  | finish no earlier than 2008-04-04 | TJ | 56h |  |
| 17 | 1.1.1.4 | **Project Management** | 23d? | 2008-03-19 | 2008-04-18 |  |  |  | 39d |  |  |  | 152h |  |
| 18 | 1.1.1.4.1 | Develop Iteration Plan: I1 | 3d | 2008-03-19 | 2008-03-21 |  |  |  | 59d |  |  | SJ | 24h |  |
| 19 | 1.1.1.4.2 | Identify and Assess Risks | 10d | 2008-03-24 | 2008-04-04 |  |  |  | 49d |  | finish no earlier than 2008-04-04 | SJ | 80h |  |
| 20 | 1.1.1.4.3 | Develop Iteration Plan: E1 | 5d? | 2008-04-14 | 2008-04-18 |  |  |  | 39d |  | finish no earlier than 2008-04-18 | SJ | 40h |  |
| 21 | 1.1.1.4.4 | Assess Iteration | 1d? | 2008-04-18 | 2008-04-18 |  |  |  | 39d |  | start no earlier than 2008-04-18 | SJ | 8h |  |
| 22 | 1.1.1.5 | **Environment** | 5d? | 2008-04-14 | 2008-04-18 |  |  |  | 39d |  |  |  |  |  |
| 23 | 1.1.1.5.1 | Setup Tools | 5d? | 2008-04-14 | 2008-04-18 |  |  |  | 1d |  | finish no earlier than 2008-04-18 |  |  |  |
| 24 | 1.2 | Inception Complete | 1d? | 2008-04-18 | 2008-04-18 |  |  |  | 0d |  | finish no earlier than 2008-04-18 |  |  |  |

Notes:
- 5: - Already have Subha's Vision content / - Record Features (in GForge) / - Record non-functional requirements at this level (will be in Supplementary Specification in Elaboration)
- 10: Develop Architecture Overview / Survey Available Assets / Define the High-Level Organization of Subsystems / Identify Key Abstractions / Develop Deployment Overview
- 19: - Ongoing
- 23: GForge / Subversion / Enterprise Architect / Choose IDE approach

| ID | WBS | Task | Duration | Start | Finish | Predecessors | Complete | Remaining | Total slack | Free slack | Constraint | Resources | Work | Actual work |
| --- | --- | --- | --- | --- | --- | --- | --- | --- | --- | --- | --- | --- | --- | --- |
| 25 | 1.3 | **Elaboration Phase** | 39d? | 2008-04-21 A | 2008-06-13 | 24 | 59% | 15.89d? | 0d |  |  |  | 2490.67h | 1416h |
| 26 | 1.3.1 | **Elaboration - Iteration 1** | 20d? | 2008-04-21 A | 2008-05-16 |  | 80% | 4.06d? | 19d |  |  |  | 1738.67h | 1416h |
| 27 | 1.3.1.1 | **Project Management** | 20d? | 2008-04-21 A | 2008-05-16 A |  | 100% |  |  |  |  |  | 328h | 328h |
| 28 | 1.3.1.1.1 | Iteration Plan | 4d? | 2008-04-28 A | 2008-05-01 A |  | 100% |  |  |  | start no earlier than 2008-04-28 | SJ | 32h | 32h |
| 29 | 1.3.1.1.2 | Risk Management | 17d? | 2008-04-24 A | 2008-05-16 A |  | 100% |  |  |  | start no earlier than 2008-04-24 | SJ | 136h | 136h |
| 30 | 1.3.1.1.3 | Manage communication (listserv, skype etc) | 20d? | 2008-04-21 A | 2008-05-16 A |  | 100% |  |  |  | finish no earlier than 2008-05-16 | SJ | 160h | 160h |
| 31 | 1.3.1.2 | **Requirements** | 8d? | 2008-04-28 A | 2008-05-07 |  | 33% | 5.33d? | 26d |  |  |  | 288h | 96h |
| 32 | 1.3.1.2.1 | **Revise Inception Use Cases** | 4d | 2008-04-28 A | 2008-05-01 A |  | 100% |  |  |  |  |  | 32h | 32h |
| 33 | 1.3.1.2.1.1 | Gene Expression | 4d | 2008-04-28 A | 2008-05-01 A |  | 100% |  |  |  | start no earlier than 2008-04-28 | ET | 32h | 32h |
| 34 | 1.3.1.2.2 | **Elaboration Use Case definition** | 8d? | 2008-04-28 A | 2008-05-07 |  | 25% | 6d? | 26d |  |  |  | 256h | 64h |
| 35 | 1.3.1.2.2.1 | Imaging | 8d? | 2008-04-28 A | 2008-05-07 A |  | 100% |  |  |  | finish no earlier than 2008-05-07 | ET | 64h | 64h |
| 36 | 1.3.1.2.2.2 | Methylation data | 8d? | 2008-04-28 | 2008-05-07 |  |  |  | 26d |  | start no earlier than 2008-04-28 | ET | 64h |  |
| 37 | 1.3.1.2.2.3 | Update study | 8d? | 2008-04-28 | 2008-05-07 |  |  |  | 26d |  | start no earlier than 2008-04-28 | ET | 64h |  |
| 38 | 1.3.1.2.2.4 | Security requirements | 8d? | 2008-04-28 | 2008-05-07 |  |  |  | 26d |  | start no earlier than 2008-04-28 | ET | 64h |  |
| 39 | 1.3.1.3 | **Analysis and Design** | 15d? | 2008-04-21 A | 2008-05-09 |  | 85% | 2.27d? | 7d | 2d |  |  | 634.67h | 528h |
| 40 | 1.3.1.3.1 | Identify subsystems | 10d? | 2008-04-21 A | 2008-05-02 A |  | 100% |  |  |  | finish no earlier than 2008-05-02 | MH | 80h | 80h |
| 41 | 1.3.1.3.2 | Identify risk characteristics | 8d? | 2008-04-21 A | 2008-04-30 A |  | 100% |  |  |  | start no earlier than 2008-04-21 | MH | 64h | 64h |
| 42 | 1.3.1.3.3 | **Use-case design** | 10d | 2008-04-21 A | 2008-05-02 |  | 50% | 5d | 12d |  |  |  | 266.67h | 160h |
| 43 | 1.3.1.3.3.1 | manage queries (create and execute genomic with clinical) | 10d | 2008-04-21 | 2008-05-02 |  |  |  | 12d |  | finish no earlier than 2008-05-02 | MH; ET | 106.67h |  |
| 44 | 1.3.1.3.3.2 | Perform Analysis (genepattern) | 10d | 2008-04-21 A | 2008-05-02 A |  | 100% |  |  |  |  | MH; TJ | 160h | 160h |
| 45 | 1.3.1.3.4 | Object Model | 10d | 2008-04-21 A | 2008-05-02 A |  | 100% |  |  |  |  | MH | 80h | 80h |
| 46 | 1.3.1.3.5 | caDSR metadata management | 8d | 2008-04-30 A | 2008-05-09 A |  | 100% |  |  |  | start no earlier than 2008-04-30 | MH | 64h | 64h |
| 47 | 1.3.1.3.6 | Implementation model | 10d | 2008-04-21 A | 2008-05-02 A |  | 100% |  |  |  |  | MH | 80h | 80h |
| 48 | 1.3.1.4 | **Implementation** | 15d? | 2008-04-28 A | 2008-05-16 |  | 96% | 0.6d? | 19d |  |  |  | 280h | 272h |
| 49 | 1.3.1.4.1 | HTP data management | 10d | 2008-05-05 A | 2008-05-16 A |  | 100% |  |  |  | start no earlier than 2008-05-05 | ET | 80h | 80h |
| 50 | 1.3.1.4.2 | Query | 10d | 2008-05-05 A | 2008-05-16 A |  | 100% |  |  |  | start no earlier than 2008-05-05 | ET; TJ | 160h | 160h |
| 51 | 1.3.1.4.3 | caCore Code Generation | 5d? | 2008-04-28 A | 2008-05-02 |  | 80% | 1d? | 29d |  | start no earlier than 2008-04-28 | ET | 40h | 32h |

| ID | WBS | Task | Type | Duration | Start | Finish | Predecessors | Complete | Total slack | Free slack | Constraint | Resources | Work | Actual work |
| --- | --- | --- | --- | --- | --- | --- | --- | --- | --- | --- | --- | --- | --- | --- |
| 52 | 1.3.1.5 | **Test** |  | 3d | 2008-05-14 | 2008-05-16 |  |  | 5d | 0d |  |  |  |  |
| 53 | 1.3.1.5.1 | Selenium testing framework(stretch) |  | 3d | 2008-05-14 | 2008-05-16 | 39 |  | 5d |  | finish no earlier than 2008-05-16 |  |  |  |
| 54 | 1.3.1.6 | **Environment** |  | 4d | 2008-04-28 A | 2008-05-01 A |  | 100% |  |  |  |  | 48h | 48h |
| 55 | 1.3.1.6.1 | Eclipse configuration |  | 2d | 2008-04-29 A | 2008-04-30 A |  | 100% |  |  | finish no earlier than 2008-04-30 | ET | 16h | 16h |
| 56 | 1.3.1.6.2 | CI environment |  | 2d | 2008-04-28 A | 2008-04-29 A |  | 100% |  |  | finish no earlier than 2008-04-29 | ET | 16h | 16h |
| 57 | 1.3.1.6.3 | ANT |  | 2d | 2008-04-30 A | 2008-05-01 A |  | 100% |  |  | finish no earlier than 2008-05-01 | ET | 16h | 16h |
| 58 | 1.3.1.7 | **Configuration and Change Management** |  | 1d? | 2008-05-16 | 2008-05-16 |  |  | 19d |  |  |  | 16h |  |
| 59 | 1.3.1.7.1 | Set up defect tracker |  | 1d? | 2008-05-16 | 2008-05-16 |  |  | 19d |  | finish no earlier than 2008-05-16 | ET | 8h |  |
| 60 | 1.3.1.7.2 | Set up feature request tracker |  | 1d? | 2008-05-16 | 2008-05-16 |  |  | 19d |  | finish no earlier than 2008-05-16 | ET | 8h |  |
| 61 | 1.3.1.8 | **Deployment** |  | 16d | 2008-04-21 A | 2008-05-12 A |  | 100% |  |  |  |  | 144h | 144h |
| 62 | 1.3.1.8.1 | Get DEV environment |  | 8d | 2008-04-21 A | 2008-04-30 A |  | 100% |  |  | finish no earlier than 2008-04-30 | SJ | 64h | 64h |
| 63 | 1.3.1.8.2 | ARC document (Draft) |  | 3d | 2008-04-28 A | 2008-04-30 A |  | 100% |  |  | start no earlier than 2008-04-28 | SJ | 24h | 24h |
| 64 | 1.3.1.8.3 | Identify and setup access for NCIA, caArray and CTMS |  | 7d | 2008-05-02 A | 2008-05-12 A |  | 100% |  |  | start no earlier than 2008-05-02 | SJ | 56h | 56h |
| 65 | 1.3.1.9 | Elaboration 1 Complete | milestone | 0d | 2008-05-16 | 2008-05-16 | 52 |  | 5d | 0d |  |  |  |  |
| 66 | 1.3.2 | **Elaboration - Iteration 2** |  | 19d? | 2008-05-19 | 2008-06-13 | 65 |  | 0d |  |  |  | 752h |  |
| 67 | 1.3.2.1 | **Project Management** |  | 16d? | 2008-05-22 | 2008-06-13 |  |  | 0d |  |  |  | 40h |  |
| 68 | 1.3.2.1.1 | Schedule |  | 2d | 2008-05-22 | 2008-05-23 |  |  | 13d | 0d | start no earlier than 2008-05-22 | SJ | 16h |  |
| 69 | 1.3.2.1.2 | Iteration Plan |  | 1d? | 2008-05-27 | 2008-05-27 | 68 |  | 13d |  |  | SJ | 8h |  |
| 70 | 1.3.2.1.3 | Risk Management |  | 1d? | 2008-06-13 | 2008-06-13 |  |  | 0d |  | finish no earlier than 2008-06-13 | SJ | 8h |  |
| 71 | 1.3.2.1.4 | E2 Iteration Assessment |  | 1d? | 2008-06-13 | 2008-06-13 |  |  | 0d |  | finish no earlier than 2008-06-13 | SJ | 8h |  |
| 72 | 1.3.2.2 | **Requirements** |  | 14d? | 2008-05-23 | 2008-06-12 |  |  | 2d |  |  |  | 216h |  |
| 73 | 1.3.2.2.1 | Wireframes for UC: Deploy Study |  | 2d | 2008-05-23 | 2008-05-27 |  |  | 11d | 0d | start no earlier than 2008-05-23 | WF | 16h |  |
| 74 | 1.3.2.2.2 | Wireframes for UC: Use Workspace |  | 2d | 2008-05-23 | 2008-05-27 |  |  | 1d | 0d | start no earlier than 2008-05-23 | MR | 16h |  |
| 75 | 1.3.2.2.3 | Wireframes for UC: Manage Queries |  | 2d | 2008-05-28 | 2008-05-29 | 73 |  | 11d |  |  | WF | 16h |  |
| 76 | 1.3.2.2.4 | Wireframes for UC: Perform Analysis |  | 2d | 2008-05-28 | 2008-05-29 | 74 |  | 1d | 0d |  | MR | 16h |  |
| 77 | 1.3.2.2.5 | Review wireframes |  | 2d | 2008-05-30 | 2008-06-02 | 76 |  | 1d | 0d |  | WF; MR; SM | 48h |  |
| 78 | 1.3.2.2.6 | Revise/Finalize UI |  | 3d | 2008-06-03 | 2008-06-05 | 77 |  | 1d | 0d |  | MR; WF | 48h |  |
| 79 | 1.3.2.2.7 | Develop User Interface |  | 5d | 2008-06-06 | 2008-06-12 | 78 |  | 1d |  |  | MR | 40h |  |
| 80 | 1.3.2.2.8 | Requirements Management Plan |  | 1d? | 2008-05-28 | 2008-05-28 |  |  | 12d |  | start no earlier than 2008-05-28 | ET | 8h |  |
| 81 | 1.3.2.2.9 | Set uprequirements management environment |  | 1d? | 2008-05-29 | 2008-05-29 |  |  | 11d |  | start no earlier than 2008-05-29 | ET | 8h |  |

Notes:
- 57: Check the options for using MAVEN - automate the process with Paul.

| ID | WBS | Task | Duration | Start | Finish | Predecessors | Total slack | Free slack | Constraint | Resources | Work |
| --- | --- | --- | --- | --- | --- | --- | --- | --- | --- | --- | --- |
| 82 | 1.3.2.3 | **Analysis and Design** | 7d? | 2008-05-22 | 2008-06-02 |  | 9d |  |  |  | 64h |
| 83 | 1.3.2.3.1 | Use-Case Design: Deploy Study | 1d? | 2008-05-22 | 2008-05-22 |  | 13d | 0d | start no earlier than 2008-05-22 | ET | 8h |
| 84 | 1.3.2.3.2 | Use-Case Design: Manage Queries | 1d? | 2008-05-23 | 2008-05-23 | 83 | 13d | 0d |  | ET | 8h |
| 85 | 1.3.2.3.3 | Use-Case Design: Use Workspace | 1d? | 2008-05-27 | 2008-05-27 | 84 | 13d |  |  | ET | 8h |
| 86 | 1.3.2.3.4 | Design Review - Team | 1d? | 2008-05-27 | 2008-05-27 |  | 13d |  | start no earlier than 2008-05-27 |  |  |
| 87 | 1.3.2.3.5 | Model Review | 1d? | 2008-05-27 | 2008-05-27 |  | 13d |  | start no earlier than 2008-05-27 |  |  |
| 88 | 1.3.2.3.6 | Software Architecture Document | 5d | 2008-05-27 | 2008-06-02 |  | 9d |  | finish no earlier than 2008-06-02 | MH | 40h |
| 89 | 1.3.2.4 | **Implementation** | 19d? | 2008-05-19 | 2008-06-13 |  | 0d |  |  |  | 368h |
| 90 | 1.3.2.4.1 | Complete caCORE integration | 5d? | 2008-05-19 | 2008-05-23 |  | 15d |  | start no earlier than 2008-05-19 | MH | 40h |
| 91 | 1.3.2.4.2 | HTP data management | 1d? | 2008-05-23 | 2008-05-23 |  | 15d |  | finish no earlier than 2008-05-23 | ET | 8h |
| 92 | 1.3.2.4.3 | Prototype NCIA integration | 2d | 2008-05-22 | 2008-05-23 |  | 15d |  | start no earlier than 2008-05-22 | TJ | 16h |
| 93 | 1.3.2.4.4 | Implement ArrayDataService Subsystem | 2d | 2008-05-30 | 2008-06-02 | 81 | 10d |  | start no earlier than 2008-05-30 | ET | 16h |
| 94 | 1.3.2.4.5 | Implement Deploy Study | 7d | 2008-05-27 | 2008-06-04 |  | 0d |  | start no earlier than 2008-05-27 | ET; MH; TJ | 168h |
| 95 | 1.3.2.4.6 | Implement Use Workspace | 3d | 2008-06-05 | 2008-06-09 | 94 | 0d |  |  | TJ; MH | 48h |
| 96 | 1.3.2.4.7 | Implement Manage Queries | 4d | 2008-06-10 | 2008-06-13 | 95 | 0d |  |  | TJ; MH | 64h |
| 97 | 1.3.2.4.8 | Implement Perform Data Analysis: simple GenePattern integration | 1d? | 2008-05-19 | 2008-05-19 |  | 19d |  |  | TBD1 | 8h |
| 98 | 1.3.2.5 | **Test** | 1d? | 2008-06-13 | 2008-06-13 |  | 0d |  |  |  |  |
| 99 | 1.3.2.5.1 | Performance/load test Manage Queries | 1d? | 2008-06-13 | 2008-06-13 |  | 0d |  | start no earlier than 2008-06-13 |  |  |
| 100 | 1.3.2.6 | **Environment** | 15d? | 2008-05-19 | 2008-06-09 |  | 5d |  |  |  | 16h |
| 101 | 1.3.2.6.1 | Write Development Case | 1d? | 2008-06-09 | 2008-06-09 |  | 5d |  | start no earlier than 2008-06-09 | ET | 8h |
| 102 | 1.3.2.6.2 | Configure nightly build | 1d? | 2008-05-19 | 2008-05-19 |  | 19d |  |  | ET | 8h |
| 103 | 1.3.2.7 | **Configuration and Change Management** | 2d? | 2008-05-28 | 2008-05-29 |  | 12d |  |  |  | 32h |
| 104 | 1.3.2.7.1 | Set up defect tracker | 1d? | 2008-05-28 | 2008-05-28 |  | 12d | 0d | start no earlier than 2008-05-28 | SJ; ET | 16h |
| 105 | 1.3.2.7.2 | Set up feature request tracker | 1d? | 2008-05-29 | 2008-05-29 | 104 | 12d |  |  | SJ; ET | 16h |

| ID | WBS | Task | Duration | Start | Finish | Total slack | Constraint | Resources | Work |
| --- | --- | --- | --- | --- | --- | --- | --- | --- | --- |
| 106 | 1.3.2.8 | **Deployment** | 2d | 2008-06-11 | 2008-06-12 | 2d |  |  | 16h |
| 107 | 1.3.2.8.1 | Deploy to DEV tier | 2d | 2008-06-11 | 2008-06-12 | 2d | start no earlier than 2008-06-11 | ET | 16h |
| 108 | 1.3.2.9 | Elaboration 2 Complete | 1d? | 2008-06-13 | 2008-06-13 | 0d | start no earlier than 2008-06-13 |  |  |
